# 32УП

Schedule from ProjectLibre, 2025-03-10 to 2025-07-10.

## Calendars

- П'ятиденка: Mon-Fri 08:00-12:00, 13:00-17:00; Sat-Sun off.

## Resources

| Resource | Rate | Cost per use |
| --- | --- | --- |
| Unassigned |  |  |
| Менеджер проєкту | 35 |  |
| Аналітик | 30 |  |
| Дизайнер | 30 |  |
| Middle front-end developer | 35 |  |
| Senior back-end developer | 40 |  |
| Middle back-end developer | 35 |  |
| Junior back-end developer | 28 |  |
| QA engineer | 29 |  |
| DevOps | 37 |  |
| Кава | 20 | 20 |
| Чай | 15 | 15 |

## Schedule

| ID | WBS | Task | Duration | Start | Finish | Predecessors | Baseline start | Baseline finish | Constraint | Deadline | Resources |
| --- | --- | --- | --- | --- | --- | --- | --- | --- | --- | --- | --- |
| 1 | 1 | **Проєкт** | 88d | 2025-03-10 | 2025-07-10 |  | 2025-03-10 | 2025-07-10 |  |  |  |
| 2 | 1.1 | Закриття проєкту | 0d | 2025-07-10 | 2025-07-10 | 5 | 2025-07-10 | 2025-07-10 | finish no later than 2025-08-04 | 2025-08-02 |  |
| 3 | 1.2 | **Запуск і супровід** | 6d | 2025-07-02 | 2025-07-10 |  | 2025-07-02 | 2025-07-10 | finish no later than 2025-08-01 | 2025-08-01 |  |
| 5 | 1.2.1 | Валідація та приймання системи замовником | 1d | 2025-07-09 | 2025-07-10 | 6 | 2025-07-09 | 2025-07-10 |  | 2025-07-20 | Менеджер проєкту |
| 6 | 1.2.2 | Перевірка якості та усунення помилок | 3d | 2025-07-04 | 2025-07-09 | 8 | 2025-07-04 | 2025-07-09 |  |  | QA engineer; Junior back-end developer [80%]; Senior back-end developer [70%] |
| 7 | 1.2.3 | Підготовка платформи | 1d | 2025-07-02 | 2025-07-03 | 9SS | 2025-07-02 | 2025-07-03 |  |  | DevOps |
| 8 | 1.2.4 | Розгортання системи та наповнення контентом | 1d | 2025-07-03 | 2025-07-04 | 7 | 2025-07-03 | 2025-07-04 |  |  | Senior back-end developer [80%]; DevOps |
| 9 | 1.2.5 | Створення пакета передачі | 2d | 2025-07-02 | 2025-07-04 | 14 | 2025-07-02 | 2025-07-04 |  |  | Менеджер проєкту [70%]; Senior back-end developer |
| 10 | 1.3 | **Розробка** | 60d | 2025-04-09 | 2025-07-02 |  | 2025-04-09 | 2025-07-02 | finish no later than 2025-07-28 | 2025-07-27 |  |
| 11 | 1.3.1 | Інтеграція | 1d | 2025-06-26 | 2025-06-27 | 13SS+3d | 2025-06-26 | 2025-06-27 |  |  |  |
| 12 | 1.3.2 | Тестування | 14d | 2025-06-03 | 2025-06-23 | 17FF, 15FS-10d | 2025-06-03 | 2025-06-23 |  |  | QA engineer [30%]; Аналітик [50%]; Middle front-end developer [30%]; DevOps [50%] |
| 13 | 1.3.3 | Доробка коду, виправлення помилок | 7d | 2025-06-23 | 2025-07-02 | 12 | 2025-06-23 | 2025-07-02 |  |  | Junior back-end developer; QA engineer [70%]; Senior back-end developer [30%]; Middle front-end developer [50%] |
| 14 | 1.3.4 | Завершення розробки | 0d | 2025-07-02 | 2025-07-02 | 13 | 2025-07-02 | 2025-07-02 |  |  |  |
| 15 | 1.3.5 | Back-end розробка | 46d | 2025-04-14 | 2025-06-17 | 16 | 2025-04-14 | 2025-06-17 |  |  | Senior back-end developer; Junior back-end developer; Middle back-end developer [70%] |
| 16 | 1.3.6 | Розробка бази даних | 3d | 2025-04-09 | 2025-04-14 | 17SS | 2025-04-09 | 2025-04-14 |  |  | Middle back-end developer [50%] |
| 17 | 1.3.7 | Front-end розробка | 32d | 2025-04-09 | 2025-05-23 | 19 | 2025-04-09 | 2025-05-23 | start no earlier than 2025-04-07 |  | Middle front-end developer [50%] |
| 18 | 1.4 | **Проєктування** | 7d | 2025-03-31 | 2025-04-09 |  | 2025-03-31 | 2025-04-09 | finish no later than 2025-05-26 | 2025-05-25 |  |
| 19 | 1.4.1 | Завершення проєктування | 0d | 2025-04-09 | 2025-04-09 | 20, 21, 22 | 2025-04-09 | 2025-04-09 |  |  |  |
| 20 | 1.4.2 | Розробка дизайну сторінок за затвердженим концептом | 7d | 2025-03-31 | 2025-04-09 | 29 | 2025-03-31 | 2025-04-09 |  |  | Дизайнер |
| 21 | 1.4.3 | Проєктування архітектури системи | 3d | 2025-03-31 | 2025-04-03 | 20SS | 2025-03-31 | 2025-04-03 |  |  | Senior back-end developer; Аналітик [70%] |
| 22 | 1.4.4 | Проєктування БД | 3d | 2025-03-31 | 2025-04-03 | 21SS | 2025-03-31 | 2025-04-03 |  |  | Middle back-end developer; Аналітик [50%] |
| 23 | 1.5 | **Аналіз вимог** | 15d | 2025-03-10 | 2025-03-31 |  | 2025-03-10 | 2025-03-31 | start no earlier than 2025-03-03 |  |  |
| 24 | 1.5.1 | Аналіз предметної області та опитування замовника | 5d | 2025-03-10 | 2025-03-17 |  | 2025-03-10 | 2025-03-17 | start no earlier than 2025-03-10 |  | Менеджер проєкту; Аналітик [70%] |
| 25 | 1.5.2 | Розробка й затвердження концепту дизайну | 2d | 2025-03-17 | 2025-03-19 | 24 | 2025-03-17 | 2025-03-19 |  |  | Аналітик [80%]; Дизайнер |
| 26 | 1.5.3 | Специфікація вимог | 6d | 2025-03-19 | 2025-03-27 | 25 | 2025-03-19 | 2025-03-27 |  |  | Менеджер проєкту [75%]; Аналітик |
| 27 | 1.5.4 | Планування проєкту | 3d | 2025-03-19 | 2025-03-24 | 26SS | 2025-03-19 | 2025-03-24 |  |  | Менеджер проєкту |
| 28 | 1.5.5 | Затвердження специфікації вимог і плану управління проєктом | 2d | 2025-03-27 | 2025-03-31 | 26, 27 | 2025-03-27 | 2025-03-31 |  |  | Менеджер проєкту; Аналітик [30%] |
| 29 | 1.5.6 | Завершення аналізу вимог | 0d | 2025-03-31 | 2025-03-31 | 28 | 2025-03-31 | 2025-03-31 |  |  |  |
