# 32УП

Schedule from ProjectLibre, 2025-03-03 to 2025-07-16.

## Calendars

- П'ятиденка: Mon-Fri 08:00-12:00, 13:00-17:00; Sat-Sun off.

## Resources

| Resource | Rate | Cost per use |
| --- | --- | --- |
| Unassigned |  |  |
| Менеджер проєкту | 35 |  |
| Аналітик | 30 |  |
| Дизайнер | 30 |  |
| Middle front-end developer | 35 |  |
| Senior back-end developer | 40 |  |
| Middle back-end developer | 35 |  |
| Junior back-end developer | 28 |  |
| QA engineer | 29 |  |
| DevOps | 37 |  |
| Кава | 20 | 20 |
| Чай | 15 | 15 |

## Schedule

| ID | WBS | Task | Duration | Start | Finish | Predecessors | Baseline start | Baseline finish | Constraint | Deadline | Resources |
| --- | --- | --- | --- | --- | --- | --- | --- | --- | --- | --- | --- |
| 1 | 1 | **Проєкт** | 98d | 2025-03-03 | 2025-07-16 |  | 2025-03-03 | 2025-07-16 |  |  |  |
| 2 | 1.1 | Закриття проєкту | 0d | 2025-07-16 | 2025-07-16 | 3 | 2025-07-16 | 2025-07-16 | finish no later than 2025-08-04 | 2025-08-02 |  |
| 3 | 1.2 | **Запуск і супровід** | 8d | 2025-07-07 | 2025-07-16 | 9FS+3d | 2025-07-07 | 2025-07-16 | finish no later than 2025-08-01 | 2025-08-01 |  |
| 4 | 1.2.1 | Валідація та приймання системи замовником | 1d | 2025-07-16 | 2025-07-16 | 5 | 2025-07-16 | 2025-07-16 |  | 2025-07-20 | Менеджер проєкту |
| 5 | 1.2.2 | Перевірка якості та усунення помилок | 3d | 2025-07-11 | 2025-07-15 | 7 | 2025-07-11 | 2025-07-15 |  |  | QA engineer; Junior back-end developer [80%]; Senior back-end developer [70%] |
| 6 | 1.2.3 | Підготовка платформи | 1d | 2025-07-09 | 2025-07-09 | 8 | 2025-07-09 | 2025-07-09 |  |  | DevOps |
| 7 | 1.2.4 | Розгортання системи та наповнення контентом | 1d | 2025-07-10 | 2025-07-10 | 6 | 2025-07-10 | 2025-07-10 |  |  | Senior back-end developer [80%]; DevOps |
| 8 | 1.2.5 | Створення пакета передачі | 2d | 2025-07-07 | 2025-07-08 |  | 2025-07-07 | 2025-07-08 |  |  | Менеджер проєкту [70%]; Senior back-end developer |
| 9 | 1.3 | **Розробка** | 60d | 2025-04-09 | 2025-07-01 | 17FS+1d | 2025-04-09 | 2025-07-01 | finish no later than 2025-07-28 | 2025-07-27 |  |
| 10 | 1.3.1 | Інтеграція | 1d | 2025-06-23 | 2025-06-23 | 12 | 2025-06-23 | 2025-06-23 |  |  |  |
| 11 | 1.3.2 | Тестування | 14d | 2025-06-12 | 2025-07-01 | 15, 16, 14 | 2025-06-12 | 2025-07-01 | start no earlier than 1970-01-01 |  | QA engineer [30%]; Аналітик [50%]; Middle front-end developer [30%] |
| 12 | 1.3.3 | Доробка коду, виправлення помилок | 7d | 2025-06-12 | 2025-06-20 | 11SS | 2025-06-12 | 2025-06-20 |  |  | Junior back-end developer; QA engineer [70%]; Senior back-end developer [30%]; Middle front-end developer [50%] |
| 13 | 1.3.4 | Завершення розробки | 0d | 2025-07-01 | 2025-07-01 | 11 | 2025-07-01 | 2025-07-01 |  |  |  |
| 14 | 1.3.5 | Back-end розробка | 46d | 2025-04-09 | 2025-06-11 |  | 2025-04-09 | 2025-06-11 |  |  | Senior back-end developer; Junior back-end developer; Middle back-end developer [70%] |
| 15 | 1.3.6 | Розробка бази даних | 3d | 2025-04-09 | 2025-04-11 |  | 2025-04-09 | 2025-04-11 |  |  | Middle front-end developer |
| 16 | 1.3.7 | Front-end розробка | 32d | 2025-04-16 | 2025-05-30 |  | 2025-04-16 | 2025-05-30 | start no earlier than 2025-04-16 |  | Middle front-end developer |
| 17 | 1.4 | **Проєктування** | 7d | 2025-03-28 | 2025-04-07 | 22FS+1d | 2025-03-28 | 2025-04-07 | finish no later than 2025-05-26 | 2025-05-25 |  |
| 18 | 1.4.1 | Завершення проєктування | 0d | 2025-04-04 | 2025-04-04 | 20 | 2025-04-04 | 2025-04-04 |  |  |  |
| 19 | 1.4.2 | Розробка дизайну сторінок за затвердженим концептом | 7d | 2025-03-28 | 2025-04-07 |  | 2025-03-28 | 2025-04-07 |  |  | Дизайнер |
| 20 | 1.4.3 | Проєктування архітектури системи | 2.5d | 2025-04-02 | 2025-04-04 | 21 | 2025-04-02 | 2025-04-04 |  |  | Senior back-end developer; Аналітик [70%] |
| 21 | 1.4.4 | Проєктування БД | 3d | 2025-03-28 | 2025-04-01 | 19SS | 2025-03-28 | 2025-04-01 |  |  | Middle back-end developer; Аналітик [50%] |
| 22 | 1.5 | **Аналіз вимог** | 18d | 2025-03-03 | 2025-03-26 |  | 2025-03-03 | 2025-03-26 |  |  |  |
| 23 | 1.5.1 | Аналіз предметної області та опитування замовника | 5d | 2025-03-03 | 2025-03-07 |  | 2025-03-03 | 2025-03-07 |  |  | Менеджер проєкту [30%]; Аналітик |
| 24 | 1.5.2 | Розробка й затвердження концепту дизайну | 2d | 2025-03-10 | 2025-03-11 | 23 | 2025-03-10 | 2025-03-11 |  |  | Аналітик [30%]; Дизайнер |
| 25 | 1.5.3 | Специфікація вимог | 6d | 2025-03-12 | 2025-03-19 | 24 | 2025-03-12 | 2025-03-19 |  |  | Менеджер проєкту [64.34%]; Аналітик [91.91%] |
| 26 | 1.5.4 | Планування проєкту | 3d | 2025-03-20 | 2025-03-24 | 25 | 2025-03-20 | 2025-03-24 |  |  | Менеджер проєкту |
| 27 | 1.5.5 | Затвердження специфікації вимог і плану управління проєктом | 2d | 2025-03-25 | 2025-03-26 | 26 | 2025-03-25 | 2025-03-26 |  |  | Менеджер проєкту; Аналітик [30%] |
| 28 | 1.5.6 | Завершення аналізу вимог | 0d | 2025-03-26 | 2025-03-26 | 27 | 2025-03-26 | 2025-03-26 |  |  |  |
